# CSTv2.4

Schedule from Primavera P6, 2026-01-01 to 2027-10-20, data date 2026-01-01, costs in USD.

## Calendars

- Cal01-5d/8hr/12hol: Mon-Fri 08:00-16:00; Sat-Sun off. Exceptions (off unless hours are given): 2026-01-01, 2026-01-19, 2026-02-16, 2026-04-20, 2026-05-25, 2026-06-19, 2026-07-03, 2026-09-07, 2026-10-12, 2026-11-11, 2026-11-26, 2026-12-25, 2027-01-01, 2027-01-18, 2027-02-15, 2027-04-19, 2027-05-31, 2027-07-05, 2027-09-06, 2027-10-11.
- Cal03A-7d/8hr/No Holidays: Mon-Sun 08:00-16:00.
- Cal04-7d/24hr/No Hol (Milestones): Mon-Sun 00:00-00:00.
- Cal12-Paving 5d/12hol: Mon-Fri 08:00-16:00; Sat-Sun off. Exceptions (off unless hours are given): 2026-01-01 to 2026-01-02, 2026-01-05 to 2026-01-09, 2026-01-12 to 2026-01-16, 2026-01-19 to 2026-01-23, 2026-01-26 to 2026-01-30, 2026-02-02 to 2026-02-06, 2026-02-09 to 2026-02-13, 2026-02-16 to 2026-02-20, 2026-02-23 to 2026-02-27, 2026-03-02 to 2026-03-06, 2026-03-09 to 2026-03-13, 2026-03-16 to 2026-03-20, 2026-03-23 to 2026-03-27, 2026-03-30 to 2026-03-31, 2026-04-20, 2026-05-25, 2026-06-19, 2026-07-03, 2026-09-07, 2026-10-12, 2026-11-11, 2026-11-16 to 2026-11-20, 2026-11-23 to 2026-11-27, 2026-11-30 to 2026-12-04, 2026-12-07 to 2026-12-11, 2026-12-14 to 2026-12-18, 2026-12-21 to 2026-12-25, 2026-12-28 to 2027-01-01, 2027-01-04 to 2027-01-08, 2027-01-11 to 2027-01-15, 2027-01-18 to 2027-01-22, 2027-01-25 to 2027-01-29, 2027-02-01 to 2027-02-05, 2027-02-08 to 2027-02-12, 2027-02-15 to 2027-02-19, 2027-02-22 to 2027-02-26, 2027-03-01 to 2027-03-05, 2027-03-08 to 2027-03-12, 2027-03-15 to 2027-03-19, 2027-03-22 to 2027-03-26, 2027-03-29 to 2027-03-31, 2027-04-19, 2027-05-31, 2027-07-05, 2027-09-06, 2027-10-11.
- Cal15-Wtr Acc 1-5d/12hol: Mon-Fri 08:00-16:00; Sat-Sun off. Exceptions (off unless hours are given): 2026-01-01 to 2026-01-02, 2026-01-05 to 2026-01-09, 2026-01-12 to 2026-01-16, 2026-01-19 to 2026-01-23, 2026-01-26 to 2026-01-30, 2026-02-02 to 2026-02-06, 2026-02-09 to 2026-02-13, 2026-02-16 to 2026-02-20, 2026-02-23 to 2026-02-27, 2026-03-02 to 2026-03-06, 2026-03-09 to 2026-03-13, 2026-03-16 to 2026-03-20, 2026-03-23 to 2026-03-27, 2026-03-30 to 2026-04-03, 2026-04-06 to 2026-04-10, 2026-04-13 to 2026-04-17, 2026-04-20 to 2026-04-24, 2026-04-27 to 2026-05-01, 2026-05-04 to 2026-05-08, 2026-05-11 to 2026-05-15, 2026-05-18 to 2026-05-22, 2026-05-25 to 2026-05-29, 2026-06-19, 2026-07-03, 2026-09-07, 2026-10-01 to 2026-10-02, 2026-10-05 to 2026-10-09, 2026-10-12 to 2026-10-16, 2026-10-19 to 2026-10-23, 2026-10-26 to 2026-10-30, 2026-11-02 to 2026-11-06, 2026-11-09 to 2026-11-13, 2026-11-16 to 2026-11-20, 2026-11-23 to 2026-11-27, 2026-11-30 to 2026-12-04, 2026-12-07 to 2026-12-11, 2026-12-14 to 2026-12-18, 2026-12-21 to 2026-12-25, 2026-12-28 to 2027-01-01, 2027-01-04 to 2027-01-08, 2027-01-11 to 2027-01-15, 2027-01-18 to 2027-01-22, 2027-01-25 to 2027-01-29, 2027-02-01 to 2027-02-05, 2027-02-08 to 2027-02-12, 2027-02-15 to 2027-02-19, 2027-02-22 to 2027-02-26, 2027-03-01 to 2027-03-05, 2027-03-08 to 2027-03-12, 2027-03-15 to 2027-03-19, 2027-03-22 to 2027-03-26, 2027-03-29 to 2027-04-02, 2027-04-05 to 2027-04-09, 2027-04-12 to 2027-04-16, 2027-04-19 to 2027-04-23, 2027-04-26 to 2027-04-30, 2027-05-03 to 2027-05-07, 2027-05-10 to 2027-05-14, 2027-05-17 to 2027-05-21, 2027-05-24 to 2027-05-28, 2027-05-31, 2027-07-05, 2027-09-06, 2027-10-01, 2027-10-04 to 2027-10-08, 2027-10-11 to 2027-10-15, 2027-10-18 to 2027-10-20.
- Cal03-7d/8hr/12hol: Mon-Sun 08:00-16:00. Exceptions (off unless hours are given): 2026-01-01, 2026-01-19, 2026-02-16, 2026-04-20, 2026-05-25, 2026-06-19, 2026-07-03 to 2026-07-04, 2026-09-07, 2026-10-12, 2026-11-11, 2026-11-26, 2026-12-25, 2027-01-01, 2027-01-18, 2027-02-15, 2027-04-19, 2027-05-31, 2027-06-19, 2027-07-04, 2027-09-06, 2027-10-11.
- Cal13-Planting 5d/12hol - Evergreen: Mon-Fri 08:00-16:00; Sat-Sun off. Exceptions (off unless hours are given): 2026-01-01 to 2026-01-02, 2026-01-05 to 2026-01-09, 2026-01-12 to 2026-01-16, 2026-01-19 to 2026-01-23, 2026-01-26 to 2026-01-30, 2026-02-02 to 2026-02-06, 2026-02-09 to 2026-02-13, 2026-02-16 to 2026-02-20, 2026-02-23 to 2026-02-27, 2026-03-02 to 2026-03-06, 2026-03-09 to 2026-03-13, 2026-03-16 to 2026-03-20, 2026-03-23 to 2026-03-27, 2026-03-30 to 2026-04-03, 2026-04-06 to 2026-04-10, 2026-04-13 to 2026-04-15, 2026-04-20, 2026-05-25, 2026-06-01 to 2026-06-05, 2026-06-08 to 2026-06-12, 2026-06-15 to 2026-06-19, 2026-06-22 to 2026-06-26, 2026-06-29 to 2026-07-03, 2026-07-06 to 2026-07-10, 2026-07-13 to 2026-07-17, 2026-07-20 to 2026-07-24, 2026-07-27 to 2026-07-31, 2026-08-03 to 2026-08-07, 2026-08-10 to 2026-08-14, 2026-09-07, 2026-10-12, 2026-10-16, 2026-10-19 to 2026-10-23, 2026-10-26 to 2026-10-30, 2026-11-02 to 2026-11-06, 2026-11-09 to 2026-11-13, 2026-11-16 to 2026-11-20, 2026-11-23 to 2026-11-27, 2026-11-30 to 2026-12-04, 2026-12-07 to 2026-12-11, 2026-12-14 to 2026-12-18, 2026-12-21 to 2026-12-25, 2026-12-28 to 2027-01-01, 2027-01-04 to 2027-01-08, 2027-01-11 to 2027-01-15, 2027-01-18 to 2027-01-22, 2027-01-25 to 2027-01-29, 2027-02-01 to 2027-02-05, 2027-02-08 to 2027-02-12, 2027-02-15 to 2027-02-19, 2027-02-22 to 2027-02-26, 2027-03-01 to 2027-03-05, 2027-03-08 to 2027-03-12, 2027-03-15 to 2027-03-19, 2027-03-22 to 2027-03-26, 2027-03-29 to 2027-04-02, 2027-04-05 to 2027-04-09, 2027-04-12 to 2027-04-15, 2027-04-19, 2027-05-31 to 2027-06-04, 2027-06-07 to 2027-06-11, 2027-06-14 to 2027-06-18, 2027-06-21 to 2027-06-25, 2027-06-28 to 2027-07-02, 2027-07-05 to 2027-07-09, 2027-07-12 to 2027-07-16, 2027-07-19 to 2027-07-23, 2027-07-26 to 2027-07-30, 2027-08-02 to 2027-08-06, 2027-08-09 to 2027-08-13, 2027-09-06, 2027-10-11, 2027-10-18 to 2027-10-20.
- Standard 5 Day Workweek: Mon-Fri 08:00-12:00, 13:00-17:00; Sat-Sun off.
- Cal10-Wntr Ineff 5d/12hol: Mon-Fri 08:00-16:00; Sat-Sun off. Exceptions (off unless hours are given): 2026-01-01, 2026-01-07 to 2026-01-08, 2026-01-14 to 2026-01-15, 2026-01-19, 2026-01-22, 2026-01-28 to 2026-01-29, 2026-02-04 to 2026-02-05, 2026-02-11 to 2026-02-12, 2026-02-16, 2026-02-19, 2026-02-25 to 2026-02-26, 2026-03-04, 2026-03-11, 2026-04-20, 2026-05-25, 2026-06-19, 2026-07-03, 2026-09-07, 2026-10-12, 2026-11-11, 2026-11-26, 2026-12-04, 2026-12-16 to 2026-12-17, 2026-12-23, 2026-12-25, 2026-12-30, 2027-01-01, 2027-01-06 to 2027-01-07, 2027-01-13 to 2027-01-14, 2027-01-18, 2027-01-21, 2027-01-27 to 2027-01-28, 2027-02-03 to 2027-02-04, 2027-02-10 to 2027-02-11, 2027-02-15, 2027-02-18, 2027-02-24 to 2027-02-25, 2027-03-03, 2027-03-10, 2027-04-19, 2027-05-31, 2027-07-05, 2027-09-06, 2027-10-11.
- Cal11-Wntr Shut 5d/12hol: Mon-Fri 08:00-16:00; Sat-Sun off. Exceptions (off unless hours are given): 2026-01-01 to 2026-01-02, 2026-01-05 to 2026-01-09, 2026-01-12 to 2026-01-16, 2026-01-19 to 2026-01-23, 2026-01-26 to 2026-01-30, 2026-02-02 to 2026-02-06, 2026-02-09 to 2026-02-13, 2026-02-16 to 2026-02-20, 2026-02-23 to 2026-02-27, 2026-03-02 to 2026-03-06, 2026-03-09 to 2026-03-13, 2026-04-20, 2026-05-25, 2026-06-19, 2026-07-03, 2026-09-07, 2026-10-12, 2026-11-11, 2026-11-26, 2026-12-01 to 2026-12-04, 2026-12-07 to 2026-12-11, 2026-12-14 to 2026-12-18, 2026-12-21 to 2026-12-25, 2026-12-28 to 2027-01-01, 2027-01-04 to 2027-01-08, 2027-01-11 to 2027-01-15, 2027-01-18 to 2027-01-22, 2027-01-25 to 2027-01-29, 2027-02-01 to 2027-02-05, 2027-02-08 to 2027-02-12, 2027-02-15 to 2027-02-19, 2027-02-22 to 2027-02-26, 2027-03-01 to 2027-03-05, 2027-03-08 to 2027-03-12, 2027-03-15, 2027-04-19, 2027-05-31, 2027-07-05, 2027-09-06, 2027-10-11.
- Cal16-Wtr Acc 2-5d/12hol: Mon-Fri 08:00-16:00; Sat-Sun off. Exceptions (off unless hours are given): 2026-01-01, 2026-01-19, 2026-02-16, 2026-04-01 to 2026-04-03, 2026-04-06 to 2026-04-10, 2026-04-13 to 2026-04-17, 2026-04-20 to 2026-04-24, 2026-04-27 to 2026-05-01, 2026-05-04 to 2026-05-08, 2026-05-11 to 2026-05-15, 2026-05-18 to 2026-05-22, 2026-05-25 to 2026-05-29, 2026-06-01 to 2026-06-05, 2026-06-08 to 2026-06-12, 2026-06-15 to 2026-06-19, 2026-06-22 to 2026-06-26, 2026-06-29 to 2026-07-03, 2026-07-06 to 2026-07-10, 2026-07-13 to 2026-07-15, 2026-09-07, 2026-09-15 to 2026-09-18, 2026-09-21 to 2026-09-25, 2026-09-28 to 2026-10-02, 2026-10-05 to 2026-10-09, 2026-10-12 to 2026-10-16, 2026-10-19 to 2026-10-23, 2026-10-26 to 2026-10-30, 2026-11-11, 2026-11-26, 2026-12-25, 2027-01-01, 2027-01-18, 2027-02-15, 2027-04-01 to 2027-04-02, 2027-04-05 to 2027-04-09, 2027-04-12 to 2027-04-16, 2027-04-19 to 2027-04-23, 2027-04-26 to 2027-04-30, 2027-05-03 to 2027-05-07, 2027-05-10 to 2027-05-14, 2027-05-17 to 2027-05-21, 2027-05-24 to 2027-05-28, 2027-05-31 to 2027-06-04, 2027-06-07 to 2027-06-11, 2027-06-14 to 2027-06-18, 2027-06-21 to 2027-06-25, 2027-06-28 to 2027-07-02, 2027-07-05 to 2027-07-09, 2027-07-12 to 2027-07-15, 2027-09-06, 2027-09-15 to 2027-09-17, 2027-09-20 to 2027-09-24, 2027-09-27 to 2027-10-01, 2027-10-04 to 2027-10-08, 2027-10-11 to 2027-10-15, 2027-10-18 to 2027-10-20.
- Cal02-6d/8hr/12hol: Mon-Sat 08:00-16:00; Sun off. Exceptions (off unless hours are given): 2026-01-01, 2026-01-19, 2026-02-16, 2026-04-20, 2026-05-25, 2026-06-19, 2026-07-03 to 2026-07-04, 2026-09-07, 2026-10-12, 2026-11-11, 2026-11-26, 2026-12-25, 2027-01-01, 2027-01-18, 2027-02-15, 2027-04-19, 2027-05-31, 2027-06-19, 2027-07-05, 2027-09-06, 2027-10-11.
- Cal05-MBTA Night/12hol: Mon-Fri 10:00-14:00; Sat-Sun off. Exceptions (off unless hours are given): 2026-01-01, 2026-01-19, 2026-02-16, 2026-04-20, 2026-05-25, 2026-06-19, 2026-07-03, 2026-09-07, 2026-10-12, 2026-11-11, 2026-11-26, 2026-12-25, 2027-01-01, 2027-01-18, 2027-02-15, 2027-04-19, 2027-05-31, 2027-07-05, 2027-09-06, 2027-10-11.
- Cal14-Planting 5d/12hol - Deciduous: Mon-Fri 08:00-16:00; Sat-Sun off. Exceptions (off unless hours are given): 2026-01-01 to 2026-01-02, 2026-01-05 to 2026-01-09, 2026-01-12 to 2026-01-16, 2026-01-19 to 2026-01-23, 2026-01-26 to 2026-01-30, 2026-02-02 to 2026-02-06, 2026-02-09 to 2026-02-13, 2026-02-16 to 2026-02-20, 2026-02-23 to 2026-02-27, 2026-03-02 to 2026-03-06, 2026-03-09 to 2026-03-13, 2026-03-16 to 2026-03-20, 2026-04-20, 2026-05-25, 2026-06-16 to 2026-06-19, 2026-06-22 to 2026-06-26, 2026-06-29 to 2026-07-03, 2026-07-06 to 2026-07-10, 2026-07-13 to 2026-07-17, 2026-07-20 to 2026-07-24, 2026-07-27 to 2026-07-31, 2026-08-03 to 2026-08-07, 2026-08-10 to 2026-08-14, 2026-08-17 to 2026-08-21, 2026-08-24 to 2026-08-28, 2026-08-31 to 2026-09-04, 2026-09-07 to 2026-09-11, 2026-09-14 to 2026-09-18, 2026-09-21 to 2026-09-25, 2026-09-28 to 2026-09-30, 2026-10-12, 2026-11-11, 2026-11-26, 2026-12-02 to 2026-12-04, 2026-12-07 to 2026-12-11, 2026-12-14 to 2026-12-18, 2026-12-21 to 2026-12-25, 2026-12-28 to 2027-01-01, 2027-01-04 to 2027-01-08, 2027-01-11 to 2027-01-15, 2027-01-18 to 2027-01-22, 2027-01-25 to 2027-01-29, 2027-02-01 to 2027-02-05, 2027-02-08 to 2027-02-12, 2027-02-15 to 2027-02-19, 2027-02-22 to 2027-02-26, 2027-03-01 to 2027-03-05, 2027-03-08 to 2027-03-12, 2027-03-15 to 2027-03-19, 2027-04-19, 2027-05-31, 2027-06-16 to 2027-06-18, 2027-06-21 to 2027-06-25, 2027-06-28 to 2027-07-02, 2027-07-05 to 2027-07-09, 2027-07-12 to 2027-07-16, 2027-07-19 to 2027-07-23, 2027-07-26 to 2027-07-30, 2027-08-02 to 2027-08-06, 2027-08-09 to 2027-08-13, 2027-08-16 to 2027-08-20, 2027-08-23 to 2027-08-27, 2027-08-30 to 2027-09-03, 2027-09-06 to 2027-09-10, 2027-09-13 to 2027-09-17, 2027-09-20 to 2027-09-24, 2027-09-27 to 2027-09-30, 2027-10-18.
- Cal06-5d/8hr/12hol-Mjr Rdwy: Mon-Fri 08:00-16:00; Sat-Sun off. Exceptions (off unless hours are given): 2026-01-01, 2026-01-19, 2026-02-16, 2026-04-20, 2026-05-08, 2026-05-22, 2026-05-25, 2026-06-19, 2026-07-02 to 2026-07-03, 2026-09-04, 2026-09-07, 2026-10-09, 2026-10-12, 2026-11-11, 2026-11-24 to 2026-11-27, 2026-12-24 to 2026-12-25, 2026-12-31 to 2027-01-01, 2027-01-18, 2027-02-15, 2027-04-19, 2027-05-07, 2027-05-28, 2027-05-31, 2027-06-18, 2027-07-02, 2027-07-05, 2027-09-03, 2027-09-06, 2027-10-15, 2027-10-18.
- Cal07-6d/8hr/12hol-MjrRdwy: Mon-Sat 08:00-16:00; Sun off. Exceptions (off unless hours are given): 2026-01-01, 2026-01-17, 2026-01-19, 2026-02-14, 2026-02-16, 2026-04-18, 2026-04-20, 2026-05-08 to 2026-05-09, 2026-05-22 to 2026-05-23, 2026-05-25, 2026-06-19, 2026-07-02 to 2026-07-04, 2026-09-04 to 2026-09-05, 2026-09-07, 2026-10-09 to 2026-10-10, 2026-10-12, 2026-11-11, 2026-11-24 to 2026-11-28, 2026-12-24 to 2026-12-25, 2026-12-31 to 2027-01-01, 2027-01-16, 2027-01-18, 2027-02-13, 2027-02-15, 2027-04-17, 2027-04-19, 2027-05-07 to 2027-05-08, 2027-05-28 to 2027-05-29, 2027-05-31, 2027-06-19, 2027-07-03, 2027-07-05, 2027-09-03 to 2027-09-04, 2027-09-06, 2027-10-08 to 2027-10-09, 2027-10-11.
- Cal08-7d/8hr/12hol-Mjr Rdwy: Mon-Sun 08:00-16:00. Exceptions (off unless hours are given): 2026-01-01, 2026-01-17 to 2026-01-19, 2026-02-14 to 2026-02-16, 2026-04-18 to 2026-04-20, 2026-05-08 to 2026-05-10, 2026-05-22 to 2026-05-25, 2026-06-19, 2026-07-02 to 2026-07-05, 2026-09-04 to 2026-09-07, 2026-10-09 to 2026-10-12, 2026-11-11, 2026-11-24 to 2026-11-29, 2026-12-24 to 2026-12-25, 2026-12-31 to 2027-01-01, 2027-01-16 to 2027-01-18, 2027-02-13 to 2027-02-15, 2027-04-17 to 2027-04-19, 2027-05-07 to 2027-05-09, 2027-05-28 to 2027-05-31, 2027-06-19, 2027-07-03 to 2027-07-04, 2027-09-03 to 2027-09-06, 2027-10-08 to 2027-10-11.
- Cal17-Reclaimation-5d/12hol: Mon-Fri 08:00-16:00; Sat-Sun off. Exceptions (off unless hours are given): 2026-01-01 to 2026-01-02, 2026-01-05 to 2026-01-09, 2026-01-12 to 2026-01-16, 2026-01-19 to 2026-01-23, 2026-01-26 to 2026-01-30, 2026-02-02 to 2026-02-06, 2026-02-09 to 2026-02-13, 2026-02-16 to 2026-02-20, 2026-02-23 to 2026-02-27, 2026-03-02 to 2026-03-06, 2026-03-09 to 2026-03-13, 2026-03-16 to 2026-03-20, 2026-03-23 to 2026-03-27, 2026-03-30 to 2026-04-03, 2026-04-06 to 2026-04-10, 2026-04-13 to 2026-04-14, 2026-04-20, 2026-05-25, 2026-06-19, 2026-07-03, 2026-09-07, 2026-10-12, 2026-10-16, 2026-10-19 to 2026-10-23, 2026-10-26 to 2026-10-30, 2026-11-02 to 2026-11-06, 2026-11-09 to 2026-11-13, 2026-11-16 to 2026-11-20, 2026-11-23 to 2026-11-27, 2026-11-30 to 2026-12-04, 2026-12-07 to 2026-12-11, 2026-12-14 to 2026-12-18, 2026-12-21 to 2026-12-25, 2026-12-28 to 2027-01-01, 2027-01-04 to 2027-01-08, 2027-01-11 to 2027-01-15, 2027-01-18 to 2027-01-22, 2027-01-25 to 2027-01-29, 2027-02-01 to 2027-02-05, 2027-02-08 to 2027-02-12, 2027-02-15 to 2027-02-19, 2027-02-22 to 2027-02-26, 2027-03-01 to 2027-03-05, 2027-03-08 to 2027-03-12, 2027-03-15 to 2027-03-19, 2027-03-22 to 2027-03-26, 2027-03-29 to 2027-04-02, 2027-04-05 to 2027-04-09, 2027-04-12 to 2027-04-14, 2027-04-19, 2027-05-31, 2027-06-18, 2027-07-05, 2027-09-06, 2027-10-18 to 2027-10-20.
- Cal11A-Wntr Shut 5d/12hol-Mjr Rdwy: Mon-Fri 08:00-16:00; Sat-Sun off. Exceptions (off unless hours are given): 2026-01-01 to 2026-01-02, 2026-01-05 to 2026-01-09, 2026-01-12 to 2026-01-16, 2026-01-19 to 2026-01-23, 2026-01-26 to 2026-01-30, 2026-02-02 to 2026-02-06, 2026-02-09 to 2026-02-13, 2026-02-16 to 2026-02-20, 2026-02-23 to 2026-02-27, 2026-03-02 to 2026-03-06, 2026-03-09 to 2026-03-13, 2026-04-20, 2026-05-08, 2026-05-22, 2026-05-25, 2026-06-19, 2026-07-02 to 2026-07-03, 2026-09-04, 2026-09-07, 2026-10-09, 2026-10-12, 2026-11-11, 2026-11-24 to 2026-11-27, 2026-12-01 to 2026-12-04, 2026-12-07 to 2026-12-11, 2026-12-14 to 2026-12-18, 2026-12-21 to 2026-12-25, 2026-12-28 to 2027-01-01, 2027-01-04 to 2027-01-08, 2027-01-11 to 2027-01-15, 2027-01-18 to 2027-01-22, 2027-01-25 to 2027-01-29, 2027-02-01 to 2027-02-05, 2027-02-08 to 2027-02-12, 2027-02-15 to 2027-02-19, 2027-02-22 to 2027-02-26, 2027-03-01 to 2027-03-05, 2027-03-08 to 2027-03-12, 2027-03-15, 2027-04-19, 2027-05-07, 2027-05-28, 2027-05-31, 2027-06-18, 2027-07-02, 2027-07-05, 2027-09-03, 2027-09-06, 2027-10-15, 2027-10-18.
- Cal12A-Paving 5d/12hol-Mjr Rdwy: Mon-Fri 08:00-16:00; Sat-Sun off. Exceptions (off unless hours are given): 2026-01-01 to 2026-01-02, 2026-01-05 to 2026-01-09, 2026-01-12 to 2026-01-16, 2026-01-19 to 2026-01-23, 2026-01-26 to 2026-01-30, 2026-02-02 to 2026-02-06, 2026-02-09 to 2026-02-13, 2026-02-16 to 2026-02-20, 2026-02-23 to 2026-02-27, 2026-03-02 to 2026-03-06, 2026-03-09 to 2026-03-13, 2026-03-16 to 2026-03-20, 2026-03-23 to 2026-03-27, 2026-03-30 to 2026-03-31, 2026-04-20, 2026-05-08, 2026-05-22, 2026-05-25, 2026-06-19, 2026-07-02 to 2026-07-03, 2026-09-04, 2026-09-07, 2026-10-09, 2026-10-12, 2026-11-11, 2026-11-16 to 2026-11-20, 2026-11-23 to 2026-11-27, 2026-11-30 to 2026-12-04, 2026-12-07 to 2026-12-11, 2026-12-14 to 2026-12-18, 2026-12-21 to 2026-12-25, 2026-12-28 to 2027-01-01, 2027-01-04 to 2027-01-08, 2027-01-11 to 2027-01-15, 2027-01-18 to 2027-01-22, 2027-01-25 to 2027-01-29, 2027-02-01 to 2027-02-05, 2027-02-08 to 2027-02-12, 2027-02-15 to 2027-02-19, 2027-02-22 to 2027-02-26, 2027-03-01 to 2027-03-05, 2027-03-08 to 2027-03-12, 2027-03-15 to 2027-03-19, 2027-03-22 to 2027-03-26, 2027-03-29 to 2027-03-31, 2027-04-19, 2027-05-07, 2027-05-28, 2027-05-31, 2027-06-18, 2027-07-02, 2027-07-05, 2027-09-03, 2027-09-06, 2027-10-15, 2027-10-18.

## Resources

| Resource | Group |
| --- | --- |
| Bid Item Value | equipment |
| Electrician | labor |
| Laborer | labor |
| Foreman | labor |
| Bulldozer Type X | equipment |
| Steel Worker | labor |
| Operator | labor |
| Crane Type X | equipment |
| Excavator Type X | equipment |
| Paver Type X | equipment |
| Grader TypeX | equipment |
| Compactor Type X | equipment |

## Schedule

| ID | WBS | Activity | Type | Duration | Start | Finish | Predecessors | Total float | Free float | Constraint | Calendar | Resources | CST-SubPhase | CST-Responsibility | CST-Type | CST-Step | CST-Phase | Preliminary Estimate (Dec-08) | Stored Baseline Start | Stored Actual Start | Stored Baseline Finish | ABP Proj ID | Health Indicator |
| --- | --- | --- | --- | --- | --- | --- | --- | --- | --- | --- | --- | --- | --- | --- | --- | --- | --- | --- | --- | --- | --- | --- | --- |
|  | Mil | **Milestones** |  |  | 2026-01-01 | 2027-10-20 |  |  |  |  |  |  |  |  |  |  |  |  |  |  |  |  |  |
|  | Gene | **General** |  |  | 2026-01-01 | 2027-10-20 |  |  |  |  |  |  |  |  |  |  |  |  |  |  |  |  |  |
| ContractNo_NTP |  | Issue Contractor NTP | milestone | 0d | 2026-01-01 | 2026-01-01 |  | 1.33d | 0.33d |  | Cal04-7d/24hr/No Hol (Milestones) |  | GN | DOT | NA | NS | MS |  |  |  |  |  |  |
| ContractNo_AR01 |  | Access Restraint: Relocate Util before Bridge Demo | milestone | 0d | 2026-08-02 | 2026-08-02 | ContractNo_1030 FF, ContractNo_U430 | 0d | 25.33d | start on 2026-08-02 | Cal04-7d/24hr/No Hol (Milestones) |  | GN | CON | NA | NS | MS |  |  |  |  |  |  |
| ContractNo_MS03 |  | MS#03 - Full Beneficial Use | milestone | 0d | 2027-08-31 | 2027-08-31 | ContractNo_C320 FF, ContractNo_C885 FF, ContractNo_MS04 FF, ContractNo_P780 FF, ContractNo_1000 FF, ContractNo_U480 FF | 0d | 0.33d | finish on or before 2027-08-31 | Cal04-7d/24hr/No Hol (Milestones) |  | GN | CON | NA | NS | MS |  |  |  |  |  |  |
| ContractNo_MS04 |  | MS#04 - Perform Final Traffic Move | milestone | 0d | 2027-08-31 | 2027-08-31 | ContractNo_C885 FF | 0d |  | finish on or after 2027-08-31 | Cal04-7d/24hr/No Hol (Milestones) |  | GN | CON | NA | NS | MS |  |  |  |  |  |  |
| ContractNo_MS02 |  | MS#02 - Substantial Completion | milestone | 0d | 2027-09-20 | 2027-09-20 | ContractNo_C340 FF, ContractNo_C360 SF | 0.67d |  | finish on or before 2027-11-15 | Cal04-7d/24hr/No Hol (Milestones) |  | GN | CON | NA | NS | MS |  |  |  |  |  |  |
| ContractNo_MS01 |  | MS#01 - Contractor Field Completion | milestone | 0d | 2027-10-20 | 2027-10-20 | ContractNo_C470, ContractNo_1020 FF, ContractNo_C330 FF | 0d |  | finish on or before 2027-12-31 | Cal04-7d/24hr/No Hol (Milestones) |  | GN | CON | NA | NS | MS |  |  |  |  |  |  |
|  | Dura | **Durations** |  |  | 2026-01-01 | 2027-10-20 |  |  |  |  |  |  |  |  |  |  |  |  |  |  |  |  |  |
| ContractNo_1000 |  | Construction Contract Duration (NTP to FBU) | level of effort | 607d | 2026-01-01 | 2027-08-31 | ContractNo_NTP SS | 0d |  |  | Cal04-7d/24hr/No Hol (Milestones) |  | DU | NA | NA | NS | MS | 2485791 | 2008-11-28 | 2008-11-28 | 2009-12-31 | 602349 | UDF_G3 |
| ContractNo_1010 |  | Construction Contract Duration (NTP to SC) | level of effort | 627.67d | 2026-01-01 | 2027-09-20 | ContractNo_NTP SS, ContractNo_MS02 FF | 0.67d | 0d |  | Cal04-7d/24hr/No Hol (Milestones) |  | DU | NA | NA | NS | MS | 2485791 | 2008-11-28 | 2008-11-28 | 2009-12-31 | 602349 | UDF_G3 |
| ContractNo_1020 |  | Construction Contract Duration (NTP to CFC) | level of effort | 657.67d | 2026-01-01 | 2027-10-20 | ContractNo_NTP SS | 0d |  |  | Cal04-7d/24hr/No Hol (Milestones) |  | DU | NA | NA | NS | MS |  |  |  |  |  |  |
| ContractNo_1030 |  | Construction Contract Duration (NTP to AR01) | level of effort | 213d | 2026-01-01 | 2026-08-02 | ContractNo_NTP SS | 0d |  |  | Cal04-7d/24hr/No Hol (Milestones) |  | DU | NA | NA | NS | MS | 2485791 | 2008-11-28 | 2008-11-28 | 2009-12-31 | 602349 | UDF_G3 |
|  | Wid | **Project Wide** |  |  |  |  |  |  |  |  |  |  |  |  |  |  |  |  |  |  |  |  |  |
|  | Pre | **Preconstruction** |  |  | 2026-01-01 | 2026-07-09 |  |  |  |  |  |  |  |  |  |  |  |  |  |  |  |  |  |
| ContractNo_PreCon |  | Pre-Construction Meeting |  | 1d | 2026-01-05 | 2026-01-05 | ContractNo_NTP SS+2.33d | 13d | 0d |  |  |  | GN | DOT | NA | NS | PC |  |  |  |  |  |  |
|  | Prm | **Permitting** |  |  | 2026-01-02 | 2026-01-30 |  |  |  |  |  |  |  |  |  |  |  |  |  |  |  |  |  |
| ContractNo_P300 |  | Permit Coordination, Apply, Obtain |  | 20d | 2026-01-02 | 2026-01-30 | ContractNo_NTP | 261d | 124d |  |  |  | PE | CON | PRO | NS | PC |  |  |  |  |  |  |
|  | Pro | **Submittals & Procurements** |  |  | 2026-01-01 | 2026-07-09 |  |  |  |  |  |  |  |  |  |  |  |  |  |  |  |  |  |
|  | 8.01 | **Subsection 8.01: Subcontractor Approvals** |  |  |  |  |  |  |  |  |  |  |  |  |  |  |  |  |  |  |  |  |  |
|  | SitePro | **Licensed Site Professional** |  |  |  |  |  |  |  |  |  |  |  |  |  |  |  |  |  |  |  |  |  |
|  | StrucClean | **Structure Cleaning Subcontractor** |  |  |  |  |  |  |  |  |  |  |  |  |  |  |  |  |  |  |  |  |  |
|  | Elec | **Electrical Subcontractor** |  |  |  |  |  |  |  |  |  |  |  |  |  |  |  |  |  |  |  |  |  |
|  | BrdDemo | **Bridge Demolition Subcontractor** |  |  |  |  |  |  |  |  |  |  |  |  |  |  |  |  |  |  |  |  |  |
|  | 100 | **Item 100: Schedule of Operations** |  |  | 2026-01-01 | 2026-02-09 |  |  |  |  |  |  |  |  |  |  |  |  |  |  |  |  |  |
| ContractNo_P740 |  | Prepare & Submit - Initial Baseline Schedule |  | 10d | 2026-01-01 | 2026-01-10 | ContractNo_NTP | 567d | 0d |  | Cal03A-7d/8hr/No Holidays |  | PR | CON | PRO | BLS | PC |  |  |  |  |  |  |
| ContractNo_P770 |  | Prepare & Submit - Scheduler Resume |  | 5d | 2026-01-02 | 2026-01-08 | ContractNo_NTP SS | 407d | 0d |  |  |  | PR | CON | PRO | BLS | PC |  |  |  |  |  |  |
| ContractNo_P790 |  | Review & Approve - Scheduler Resume |  | 5d | 2026-01-09 | 2026-01-13 | ContractNo_P770 | 594d | 27d |  | Cal03A-7d/8hr/No Holidays |  | PR | DOT | PRO | BLS | PC |  |  |  |  |  |  |
| ContractNo_P750 |  | Review & Respond - Initial Baseline Schedule |  | 10d | 2026-01-11 | 2026-01-20 | ContractNo_P740 | 567d | 0d |  | Cal03A-7d/8hr/No Holidays |  | PR | DOT | PRO | BLS | PC |  |  |  |  |  |  |
| ContractNo_P760 |  | Prepare & Submit - Final Baseline Schedule |  | 10d | 2026-01-21 | 2026-01-30 | ContractNo_P750 | 549d | 0d |  | Cal03-7d/8hr/12hol |  | PR | CON | PRO | BLS | PC |  |  |  |  |  |  |
| ContractNo_P780 |  | Review & Approve - Final Baseline Schedule |  | 10d | 2026-01-31 | 2026-02-09 | ContractNo_P760, ContractNo_P790 FF | 567d |  |  | Cal03A-7d/8hr/No Holidays | Bid Item Value [240 h] | PR | DOT | PRO | BLS | PC |  |  |  |  |  |  |

| ID | WBS | Activity | Duration | Start | Finish | Predecessors | Total float | Free float | Calendar | Resources | CST-SubPhase | CST-Responsibility | CST-Type | CST-Step | CST-Phase |
| --- | --- | --- | --- | --- | --- | --- | --- | --- | --- | --- | --- | --- | --- | --- | --- |
|  | 114.1 | **Item 114.1: Demolition of Superstructure** |  | 2026-01-02 | 2026-03-08 |  |  |  |  |  |  |  |  |  |  |
| ContractNo_P620 |  | Prepare & Submit - Demolition Plan | 25d | 2026-01-02 | 2026-02-06 | ContractNo_NTP | 253d | 0d |  | Bid Item Value [200 h] | PR | CON | PRO | DEM | PC |
| ContractNo_P630 |  | Review & Approve - Demolition Plan | 30d | 2026-02-07 | 2026-03-08 | ContractNo_P620 | 374d | 171d | Cal03A-7d/8hr/No Holidays |  | PR | DOT | PRO | DEM | PC |
|  | 119.5 | **Item 119.5: Construction Noise Control** |  |  |  |  |  |  |  |  |  |  |  |  |  |
|  | 149.2 | **Item 149.2: Public Outreach** |  | 2026-01-01 | 2026-02-09 |  |  |  |  |  |  |  |  |  |  |
| ContractNo_P1060 |  | Prepare & Submit - Public Outreach Plan | 10d | 2026-01-01 | 2026-01-10 | ContractNo_NTP SS | 14d | 0d | Cal03A-7d/8hr/No Holidays |  | PR | CON | PRO | NS | PC |
| ContractNo_P1070 |  | Review & Approve - Public Outreach Plan | 30d | 2026-01-11 | 2026-02-09 | ContractNo_P1060 | 14d | 13d | Cal03A-7d/8hr/No Holidays |  | PR | DOT | PRO | NS | PC |
|  | 180.01 | **Item 180.01: Environmental Health & Safety Program** |  | 2026-01-02 | 2026-02-22 |  |  |  |  |  |  |  |  |  |  |
| ContractNo_P130 |  | Prepare & Submit - Environmental Health & Safety Plan | 15d | 2026-01-02 | 2026-01-23 | ContractNo_NTP | 5d | 0d |  |  | PR | CON | PRO | HSP | PC |
| ContractNo_P140 |  | Review & Approve - Environmental Health & Safety Plan | 30d | 2026-01-24 | 2026-02-22 | ContractNo_P130 | 8d | 7d | Cal03A-7d/8hr/No Holidays |  | PR | DOT | PRO | HSP | PC |
|  | 220 | **Items 220.x: Drainage Structures** |  | 2026-01-02 | 2026-05-12 |  |  |  |  |  |  |  |  |  |  |
| ContractNo_P550 |  | Prepare & Submit - Shop Drawings Drainage Structures | 10d | 2026-01-02 | 2026-01-15 | ContractNo_NTP | 307d | 0d |  |  | PR | CON | PRO | DRA | PC |
| ContractNo_P560 |  | Review & Approve - Shop Drawings Drainage Structures | 30d | 2026-01-16 | 2026-02-14 | ContractNo_P550 | 450d | 2d | Cal03A-7d/8hr/No Holidays |  | PR | DOT | PRO | DRA | PC |
| ContractNo_P580 |  | Fabrication & Delivery - Drainage Structures | 60d | 2026-02-17 | 2026-05-12 | ContractNo_P560 | 307d | 296d |  |  | PR | CON | PRO | DRA | PC |
|  | 701.47 | **Item 701.47: Winter Concrete Plan** |  | 2026-01-02 | 2026-02-22 |  |  |  |  |  |  |  |  |  |  |
| ContractNo_P720 |  | Prepare & Submit - Winter Concrete Plan | 15d | 2026-01-02 | 2026-01-23 | ContractNo_NTP | 269d | 0d |  |  | PR | CON | PRO | WNT | PC |
| ContractNo_P730 |  | Review & Approve - Winter Concrete Plan | 30d | 2026-01-24 | 2026-02-22 | ContractNo_P720 | 396d | 193d | Cal03A-7d/8hr/No Holidays |  | PR | DOT | PRO | WNT | PC |
|  | 701.61 | **Item 701.61: Contractor Quality Control Plan** |  | 2026-01-02 | 2026-02-22 |  |  |  |  |  |  |  |  |  |  |
| ContractNo_P1080 |  | Prepare & Submit - Contractor Quality Control Plan | 15d | 2026-01-02 | 2026-01-23 | ContractNo_NTP SS | 5d | 0d |  |  | PR | CON | PRO | NS | PC |
| ContractNo_P1090 |  | Review & Approve - Contractor Quality Control Plan | 30d | 2026-01-24 | 2026-02-22 | ContractNo_P1080 | 8d | 7d | Cal03A-7d/8hr/No Holidays |  | PR | DOT | PRO | NS | PC |
|  | 756 | **Item 756: Stormwater Water Protection Plan** |  | 2026-01-02 | 2026-02-22 |  |  |  |  |  |  |  |  |  |  |
| ContractNo_P160 |  | Prepare & Submit - SWPPP | 15d | 2026-01-02 | 2026-01-23 | ContractNo_NTP | 5d | 0d |  |  | PR | CON | PRO | SWP | PC |
| ContractNo_P170 |  | Review & Approve - SWPPP | 30d | 2026-01-24 | 2026-02-22 | ContractNo_P160 | 8d | 7d | Cal03A-7d/8hr/No Holidays |  | PR | DOT | PRO | SWP | PC |
|  | 850 | **Items 850.x: Traffic Control for Construction and Maint Operations** |  | 2026-01-02 | 2026-02-22 |  |  |  |  |  |  |  |  |  |  |
| ContractNo_P190 |  | Prepare & Submit - Traffic Control Plan | 15d | 2026-01-02 | 2026-01-23 | ContractNo_NTP | 0d |  |  |  | PR | CON | PRO | TCP | PC |
| ContractNo_P200 |  | Review & Approve - Traffic Control Plan | 30d | 2026-01-24 | 2026-02-22 | ContractNo_P190 | 1d | 0d | Cal03A-7d/8hr/No Holidays |  | PR | DOT | PRO | TCP | PC |

| ID | WBS | Activity | Duration | Start | Finish | Predecessors | Total float | Free float | Calendar | Resources | CST-SubPhase | CST-Responsibility | CST-Type | CST-Step | CST-Phase |
| --- | --- | --- | --- | --- | --- | --- | --- | --- | --- | --- | --- | --- | --- | --- | --- |
|  | 991.1 | **Item 991.1: Control of Water** |  | 2026-01-02 | 2026-03-08 |  |  |  |  |  |  |  |  |  |  |
| ContractNo_P640 |  | Prepare & Submit - Water Control Plan | 25d | 2026-01-02 | 2026-02-06 | ContractNo_NTP | 135d | 0d |  | Bid Item Value [200 h] | PR | CON | PRO | WCP | PC |
| ContractNo_P650 |  | Review & Approve - Water Control Plan | 30d | 2026-02-07 | 2026-03-08 | ContractNo_P640 | 198d | 151d | Cal03A-7d/8hr/No Holidays |  | PR | DOT | PRO | WCP | PC |
|  | 995.01 | **Item 995.01: Bridge** |  | 2026-01-02 | 2026-07-09 |  |  |  |  |  |  |  |  |  |  |
|  | SEP | **Steel Erection Procedure** |  | 2026-01-02 | 2026-03-08 |  |  |  |  |  |  |  |  |  |  |
| ContractNo_P600 |  | Prepare & Submit - Steel Erection Procedure | 25d | 2026-01-02 | 2026-02-06 | ContractNo_NTP | 263d | 0d |  | Bid Item Value [200 h] | PR | CON | PRO | SEP | PC |
| ContractNo_P610 |  | Review & Approve - Steel Erection Procedure | 30d | 2026-02-07 | 2026-03-08 | ContractNo_P600 | 388d | 186d | Cal03A-7d/8hr/No Holidays |  | PR | DOT | PRO | SEP | PC |
|  | 901 | **SubItem 901: 4000 PSI 1.5 in., 565 Cement Concrete** |  | 2026-01-02 | 2026-03-08 |  |  |  |  |  |  |  |  |  |  |
| ContractNo_P100 |  | Prepare & Submitt - Concrete Mix Design | 25d | 2026-01-02 | 2026-02-06 | ContractNo_NTP | 259d | 0d |  | Bid Item Value [200 h] | PR | CON | PRO | CMD | PC |
| ContractNo_P110 |  | Review & Approve - Concrete Mix Design | 30d | 2026-02-07 | 2026-03-08 | ContractNo_P100 | 382d | 179d | Cal03A-7d/8hr/No Holidays |  | PR | DOT | PRO | CMD | PC |
|  | 960.01 | **SubItem 960.01: Structural Steel - Coated Steel** |  | 2026-01-02 | 2026-06-25 |  |  |  |  |  |  |  |  |  |  |
| ContractNo_P450 |  | Prepare & Submit - Shop Drawings Steel Beams | 10d | 2026-01-02 | 2026-01-15 | ContractNo_NTP SS | 189d | 0d |  |  | PR | CON | PRO | STL | PC |
| ContractNo_P460 |  | Review & Approve - Shop Drawings Steel Beams | 30d | 2026-01-16 | 2026-02-14 | ContractNo_P450 | 277d | 2d | Cal03A-7d/8hr/No Holidays |  | PR | DOT | PRO | STL | PC |
| ContractNo_P480 |  | Fabrication & Delivery - Steel Beams | 90d | 2026-02-17 | 2026-06-25 | ContractNo_P460 | 190d | 53d |  |  | PR | CON | PRO | STL | PC |
|  | 975.1 | **SubItem 975.1: Metal Bridge Railing (3 Rail), Steel (Type S3-TL4)** |  | 2026-01-02 | 2026-06-25 |  |  |  |  |  |  |  |  |  |  |
| ContractNo_P690 |  | Prepare & Submit -Shop Drawings Bridge Rail | 10d | 2026-01-02 | 2026-01-15 | ContractNo_NTP SS | 226d | 0d |  |  | PR | CON | PRO | BRR | PC |
| ContractNo_P700 |  | Review & Approve - Shop Drawings Bridge Rail | 30d | 2026-01-16 | 2026-02-14 | ContractNo_P690 | 332d | 2d | Cal03A-7d/8hr/No Holidays |  | PR | DOT | PRO | BRR | PC |
| ContractNo_P710 |  | Fabrication & Delivery - Bridge Rail | 90d | 2026-02-17 | 2026-06-25 | ContractNo_P700 | 226d | 89d |  |  | PR | CON | PRO | BRR | PC |
|  | PD | **Precast Decks** |  | 2026-01-02 | 2026-07-09 |  |  |  |  |  |  |  |  |  |  |
| ContractNo_P660 |  | Prepare & Submit - Shop Drawings Precast Deck | 20d | 2026-01-02 | 2026-01-30 | ContractNo_NTP | 188d | 0d |  |  | PR | CON | PRO | PCD | PC |
| ContractNo_P670 |  | Review & Approve - Shop Drawings Precast Deck | 30d | 2026-01-31 | 2026-03-01 | ContractNo_P660 | 273d | 0d | Cal03A-7d/8hr/No Holidays |  | PR | DOT | PRO | PCD | PC |
| ContractNo_P680 |  | Fabrication & Delivery - Precast Deck | 90d | 2026-03-02 | 2026-07-09 | ContractNo_P670 | 187d | 50d |  |  | PR | CON | PRO | PCD | PC |
|  | TPD | **Temporary Pavement Design** |  | 2026-01-02 | 2026-02-22 |  |  |  |  |  |  |  |  |  |  |
| ContractNo_P220 |  | Prepare & Submit - Temporary Pavement Design | 15d | 2026-01-02 | 2026-01-23 | ContractNo_NTP | 308d | 0d |  |  | PR | CON | PRO | TPD | PC |
| ContractNo_P230 |  | Review & Approve - Temporary Pavement Design | 30d | 2026-01-24 | 2026-02-22 | ContractNo_P220 | 452d | 252d | Cal03A-7d/8hr/No Holidays |  | PR | DOT | PRO | TPD | PC |

| ID | WBS | Activity | Duration | Start | Finish | Predecessors | Total float | Free float | Calendar | CST-SubPhase | CST-Responsibility | CST-Type | CST-Step | CST-Phase | CST-Location |
| --- | --- | --- | --- | --- | --- | --- | --- | --- | --- | --- | --- | --- | --- | --- | --- |
|  | Uti | **Utility** |  | 2026-01-01 | 2026-07-30 |  |  |  |  |  |  |  |  |  |  |
|  | URP | **Utility Relocation & Coordination Plan** |  | 2026-01-01 | 2026-01-21 |  |  |  |  |  |  |  |  |  |  |
| ContractNo_P250 |  | Prepare & Submit - Early Utiltiy Relocation Request\Coordination Plan | 14d | 2026-01-01 | 2026-01-14 | ContractNo_NTP | 17d | 0d | Cal03A-7d/8hr/No Holidays | PR | CON | PRO | URP | PC |  |
| ContractNo_P260 |  | Review & Approve - Early Utiltiy Relocation Request\Coordination Plan | 7d | 2026-01-15 | 2026-01-21 | ContractNo_P250 | 17d | 0d | Cal03A-7d/8hr/No Holidays | PR | DOT | PRO | URP | PC |  |
|  | Not | **Utility Notifications & Meetings** |  | 2026-01-22 | 2026-02-20 |  |  |  |  |  |  |  |  |  |  |
| ContractNo_U100 |  | Coordinate/Mobilization Period - Relocation w/ Utility Company - [insert Utility 1 Name] | 30d | 2026-01-22 | 2026-02-20 | ContractNo_P260 | 17d | 16d | Cal03A-7d/8hr/No Holidays | GN | CON | UTIL | NS | UR |  |
| ContractNo_U350 |  | Coordinate/Mobilization Period - Relocation w/ Utility Company - [insert Utility 2 Name] | 30d | 2026-01-22 | 2026-02-20 | ContractNo_P260 | 52d | 51d | Cal03A-7d/8hr/No Holidays | GN | CON | UTIL | NS | UR |  |
| ContractNo_U360 |  | Coordinate/Mobilization Period - Relocation w/ Utility Company - [insert Utility 3 Name] | 30d | 2026-01-22 | 2026-02-20 | ContractNo_P260 | 88d | 87d | Cal03A-7d/8hr/No Holidays | GN | CON | UTIL | NS | UR |  |
| ContractNo_U370 |  | Coordinate/Mobilization Period - Relocation w/ Utility Company - [insert Utility 4 Name] | 30d | 2026-01-22 | 2026-02-20 | ContractNo_P260 | 125d | 124d | Cal03A-7d/8hr/No Holidays | GN | CON | UTIL | NS | UR |  |
|  | Rel | **Utility Relocation** |  | 2026-03-09 | 2026-07-30 |  |  |  |  |  |  |  |  |  |  |
|  | 1 | **Utility 1 PUC Tasks** |  | 2026-03-09 | 2026-04-10 |  |  |  |  |  |  |  |  |  |  |
| ContractNo_U340 |  | Utility 1 Task 1: Copy Activity Name from PUC Form | 20d | 2026-03-09 | 2026-04-03 | ContractNo_P260, ContractNo_U100, ContractNo_C900 | 1d | 0d |  | GN | CON | UTIL | NS | UR |  |
| ContractNo_U120 |  | Utility 1 Task 2: Copy Activity Name from PUC Form | 5d | 2026-04-06 | 2026-04-10 | ContractNo_U340 | 1d | 0d |  | GN | CON | UTIL | NS | UR |  |
|  | 2 | **Utility 2 PUC Tasks** |  | 2026-04-13 | 2026-05-18 |  |  |  |  |  |  |  |  |  |  |
| ContractNo_U380 |  | Utility 2 Task 1: Copy Activity Name from PUC Form | 20d | 2026-04-13 | 2026-05-11 | ContractNo_U120, ContractNo_U350 | 1d | 0d |  | GN | CON | UTIL | NS | UR |  |
| ContractNo_U390 |  | Utility 2 Task 2: Copy Activity Name from PUC Form | 5d | 2026-05-12 | 2026-05-18 | ContractNo_U380 | 1d | 0d |  | GN | CON | UTIL | NS | UR |  |
|  | 3 | **Utility 3 PUC Tasks** |  | 2026-05-19 | 2026-06-24 |  |  |  |  |  |  |  |  |  |  |
| ContractNo_U400 |  | Utility 3 Task 1: Copy Activity Name from PUC Form | 20d | 2026-05-19 | 2026-06-16 | ContractNo_U390, ContractNo_U360 | 1d | 0d |  | GN | CON | UTIL | NS | UR |  |
| ContractNo_U410 |  | Utility 3 Task 2: Copy Activity Name from PUC Form | 5d | 2026-06-17 | 2026-06-24 | ContractNo_U400 | 1d | 0d |  | GN | CON | UTIL | NS | UR |  |
|  | 4 | **Utility 4 PUC Tasks** |  | 2026-06-25 | 2026-07-30 |  |  |  |  |  |  |  |  |  |  |
| ContractNo_U420 |  | Utility 4 Task 1: Copy Activity Name from PUC Form | 20d | 2026-06-25 | 2026-07-23 | ContractNo_U410, ContractNo_U370 | 1d | 0d |  | GN | CON | UTIL | NS | UR |  |
| ContractNo_U430 |  | Utility 4 Task 2: Copy Activity Name from PUC Form | 5d | 2026-07-24 | 2026-07-30 | ContractNo_U420 | 1d | 0d |  | GN | CON | UTIL | NS | UR |  |
|  | SCONN | **Utility Service Connections** |  | 2026-01-06 | 2026-03-10 |  |  |  |  |  |  |  |  |  |  |
| ContractNo_U440 |  | Contractor Request WO# for Service Connection @ Location XXX (If Required) | 5d | 2026-01-06 | 2026-01-12 | ContractNo_PreCon, ContractNo_NTP SS | 382d | 0d |  | P03 | CON | UTIL | SD | UR | Quadrant 3 |
| ContractNo_U450 |  | Utility Assigns WO# for Service Connection @ Location XXX (If Required) | 5d | 2026-01-13 | 2026-01-20 | ContractNo_U440 | 382d | 0d |  | P03 | UKE | UTIL | SD | UR | Quadrant 3 |
| ContractNo_U460 |  | Utility Completes Design and Requests payment for Service Connection WO# (If Required) | 20d | 2026-01-20 | 2026-02-09 | ContractNo_U450 | 556.67d | 20.67d | Cal04-7d/24hr/No Hol (Milestones) | P03 | UKE | UTIL | SD | UR | Quadrant 3 |
| ContractNo_U470 |  | Contractor installs UG conduit for Service Connection @ Location XXX (If Required) | 5d | 2026-03-02 | 2026-03-06 | ContractNo_U460, ContractNo_C900 SS | 369d | 0d |  | P03 | CON | UTIL | SD | UR | Quadrant 3 |
| ContractNo_U480 |  | Utility performs Service Connection @ Location XXX (If Required) | 2d | 2026-03-09 | 2026-03-10 | ContractNo_U470 | 369d |  |  | P03 | UKE |  | SD | UR | Quadrant 3 |

| ID | WBS | Activity | Type | Duration | Start | Finish | Predecessors | Total float | Free float | Calendar | Resources | CST-SubPhase | CST-Responsibility | CST-Type | CST-Step | CST-Phase |
| --- | --- | --- | --- | --- | --- | --- | --- | --- | --- | --- | --- | --- | --- | --- | --- | --- |
|  | Con | **Construction** |  |  | 2026-01-06 | 2027-08-30 |  |  |  |  |  |  |  |  |  |  |
|  | Gene | **General** |  |  |  |  |  |  |  |  |  |  |  |  |  |  |
|  | Mobi | **Start-up** |  |  | 2026-01-06 | 2026-03-06 |  |  |  |  |  |  |  |  |  |  |
| ContractNo_C070 |  | Contractor Mobilize |  | 20d | 2026-01-06 | 2026-02-03 | ContractNo_NTP, ContractNo_PreCon | 13d | 0d |  | Bid Item Value [160 h] | GN | CON | NA | NS | CN |
| ContractNo_C100 |  | Establish Engineer's Field Office |  | 20d | 2026-01-06 | 2026-02-03 | ContractNo_C070 SS, ContractNo_PreCon | 13d | 12d |  | Bid Item Value [80 h] | GN | CON | NA | NS | CN |
| ContractNo_C910 |  | MassDOT Baseline Survey / Layout of Utility Pole Locations |  | 20d | 2026-01-06 | 2026-02-03 | ContractNo_PreCon | 18d | 17d |  | Bid Item Value [80 h] | GN | CON | NA | NS | CN |
| ContractNo_C370 |  | Install Traffic Devices, Barriers, Signage |  | 5d | 2026-02-23 | 2026-02-27 | ContractNo_P1070, ContractNo_C100, ContractNo_P200 | 1d | 0d |  |  | GN | CON | SITE | NS | CN |
| ContractNo_C080 |  | Install SWPPP Systems |  | 5d | 2026-03-02 | 2026-03-06 | ContractNo_C070, ContractNo_P170, ContractNo_P140, ContractNo_P1090, ContractNo_C370 | 237d | 100d |  |  | GN | CON | SITE | NS | CN |
| ContractNo_C900 |  | Contractor Performs Utility Enabling Work (If Required) |  | 5d | 2026-03-02 | 2026-03-06 | ContractNo_P170, ContractNo_P140, ContractNo_P1090, ContractNo_C910, ContractNo_C370 | 1d | 0d |  |  | GN | CON | SITE | NS | CN |
|  | Ph1 | **Stage 1** |  |  | 2026-07-31 | 2026-11-10 |  |  |  |  |  |  |  |  |  |  |
|  | StpA | **Step A** |  |  | 2026-07-31 | 2026-09-10 |  |  |  |  |  |  |  |  |  |  |
| ContractNo_C465 |  | Install Temporary Shielding - P1SA NB |  | 7d | 2026-07-31 | 2026-08-10 | ContractNo_C080, ContractNo_P300, ContractNo_P1090, ContractNo_U430 | 137d | 0d |  |  | P01 | CON | DEMO | SA | CN |
| ContractNo_C480 |  | Environmental Protection of Box Turtles - P1SA NB |  | 5d | 2026-07-31 | 2026-08-06 | ContractNo_P1090, ContractNo_U430 | 32d | 0d | Cal15-Wtr Acc 1-5d/12hol |  | P01 | CON | EART | SA | CN |
| ContractNo_C485 |  | Install Water Control Measures - P1SA NB |  | 6d | 2026-08-07 | 2026-08-14 | ContractNo_C480, ContractNo_P650, ContractNo_P1090 | 32d | 0d | Cal15-Wtr Acc 1-5d/12hol |  | P01 | CON | WATE | SA | CN |
| ContractNo_C475 |  | Demo Existing Superstructure - P1SA NB |  | 4d | 2026-08-11 | 2026-08-14 | ContractNo_C080, ContractNo_C465 | 137d | 0d |  | Bid Item Value [32 h]; Laborer [32 h]; Operator [32 h]; Steel Worker [32 h]; Electrician [32 h]; Foreman [32 h]; Crane Type X [32 h]; Bulldozer Type X [32 h]; Excavator Type X [32 h]; Paver Type X [32 h]; Grader TypeX [32 h]; Compactor Type X [32 h] | P01 | CON | DEMO | SA | CN |
| ContractNo_C490 |  | Excavate Abutments & Surrounding Area - P1SA NB |  | 8d | 2026-08-17 | 2026-08-26 | ContractNo_C475, ContractNo_C485, ContractNo_P1090 | 137d | 0d |  | Laborer [210 h] | P01 | CON | EART | SA | CN |
| ContractNo_C505 |  | Demo Existing Substructure - P1SA NB |  | 6d | 2026-08-27 | 2026-09-03 | ContractNo_C475, ContractNo_C485, ContractNo_C490, ContractNo_AR01, ContractNo_P630 | 137d | 0d |  |  | P01 | CON | DEMO | SA | CN |
| ContractNo_C515 |  | Set & Grout Precast Abutments - P1SA NB (NOTE: Ensure Grout Cure Period is accounted for) |  | 4d | 2026-09-04 | 2026-09-10 | ContractNo_C505, ContractNo_P110, ContractNo_P730, ContractNo_P1090 | 137d | 0d |  |  | P01 | CON | CONC | SA | CN |
|  | StpB | **Step B** |  |  | 2026-09-10 | 2026-11-10 |  |  |  |  |  |  |  |  |  |  |
| ContractNo_C525 |  | Install Steel Beams - P1SB NB |  | 6d | 2026-09-10 | 2026-09-18 | ContractNo_C515, ContractNo_P480, ContractNo_P610 | 144.12d | 0.12d | Standard 5 Day Workweek | Steel Worker [210 h] | P01 | CON | STEE | SB | CN |
| ContractNo_C535 |  | Install Precast Decks - P1SB NB |  | 3d | 2026-09-21 | 2026-09-23 | ContractNo_C525, ContractNo_P680 | 137d | 0d |  |  | P01 | CON | CONC | SB | CN |
| ContractNo_C920 |  | Postension Precast Decks - P1SB NB |  | 1d | 2026-09-24 | 2026-09-24 | ContractNo_C535 | 137d | 0d |  |  | P01 | CON | CONC | SB | CN |
| ContractNo_C545 |  | Grout Precast Decks - P1SB NB (NOTE: Ensure Grout Cure Period is accounted for) |  | 3d | 2026-09-25 | 2026-09-29 | ContractNo_C535, ContractNo_C920 | 137d | 0d |  |  | P01 | CON | CONC | SB | CN |
| ContractNo_C555 |  | F/R/Pour Sidewalk Placement 1 - P1SB NB |  | 4d | 2026-09-30 | 2026-10-05 | ContractNo_C545 | 137d | 0d |  |  | P01 | CON | CONC | SB | CN |
| ContractNo_C930 |  | 72 Hour Placement Cure Period for Sidewalks - P1SB NB |  | 3d | 2026-10-05 | 2026-10-08 | ContractNo_C555 | 203.67d | 0.67d | Cal04-7d/24hr/No Hol (Milestones) |  | P01 | CON | CONC | SB | CN |
| ContractNo_C940 |  | Sidewalk Placement 2 - P1SB NB |  | 2d | 2026-10-09 | 2026-10-13 | ContractNo_C930 | 137d | 0d |  |  | P01 | CON | CONC | SB | CN |
| ContractNo_C950 |  | Full Cure Period for Sidewalks - P1SB NB |  | 14d | 2026-10-13 | 2026-10-27 | ContractNo_C940 | 202.67d | 0.67d | Cal04-7d/24hr/No Hol (Milestones) |  | P01 | CON | CONC | SB | CN |
| ContractNo_C575 |  | Install waterproofing - P1SB NB |  | 3d | 2026-10-28 | 2026-10-30 | ContractNo_C555, ContractNo_C950 | 44d | 0d | Cal12-Paving 5d/12hol |  | P01 | CON | CONC | SB | CN |
| ContractNo_C580 |  | Place Protective Course Pavement - P1SB NB |  | 1d | 2026-11-02 | 2026-11-02 | ContractNo_C575, ContractNo_P230, ContractNo_C950 | 44d | 0d | Cal12-Paving 5d/12hol |  | P01 | CON | SITE | SB | CN |
| ContractNo_C565 |  | Install Railings - P1SB NB |  | 4d | 2026-11-03 | 2026-11-06 | ContractNo_C555, ContractNo_P710, ContractNo_C950, ContractNo_C580 | 137d | 0d |  |  | P01 | CON | STEE | SB | CN |
| ContractNo_C590 |  | Install Pavement Markers, Sign and Stripe - P1SB NB |  | 2d | 2026-11-03 | 2026-11-04 | ContractNo_C580 | 46d | 2d | Cal12-Paving 5d/12hol |  | P01 | CON | SITE | SB | CN |
| ContractNo_C585 |  | Complete Phase 1 - P1SB NB | milestone | 0d | 2026-11-06 | 2026-11-06 | ContractNo_C590, ContractNo_C565 | 137d | 0d |  |  | P01 | CON | NA | SB | CN |
| ContractNo_C595 |  | Set Jersey Barriers & Signage - P1SB NB |  | 2d | 2026-11-09 | 2026-11-10 | ContractNo_C590, ContractNo_C585 | 137d | 0d |  |  | P01 | CON | SITE | SB | CN |

| ID | WBS | Activity | Type | Duration | Start | Finish | Predecessors | Total float | Free float | Calendar | Resources | CST-SubPhase | CST-Responsibility | CST-Type | CST-Step | CST-Phase |
| --- | --- | --- | --- | --- | --- | --- | --- | --- | --- | --- | --- | --- | --- | --- | --- | --- |
|  | StpC | **Step C** |  |  |  |  |  |  |  |  |  |  |  |  |  |  |
|  | StpD | **Step D** |  |  |  |  |  |  |  |  |  |  |  |  |  |  |
|  | Ph2 | **Stage 2** |  |  | 2026-11-12 | 2027-08-30 |  |  |  |  |  |  |  |  |  |  |
|  | StpA | **Step A** |  |  | 2026-11-12 | 2027-06-21 |  |  |  |  |  |  |  |  |  |  |
| ContractNo_C750 |  | Traffic Switch from Phase I |  | 2d | 2026-11-12 | 2026-11-13 | ContractNo_C595, ContractNo_C585 | 137d | 0d |  | Electrician [48 h] | P02 | CON | SITE | SA | CN |
| ContractNo_C765 |  | Install Temporary Shielding - P2SA SB |  | 5d | 2026-11-16 | 2026-11-20 | ContractNo_C750 | 137d | 135d |  |  | P02 | CON | DEMO | SA | CN |
| ContractNo_C755 |  | Install Water Control Measures - P2SA SB |  | 6d | 2027-06-01 | 2027-06-08 | ContractNo_C585 | 2d | 0d | Cal15-Wtr Acc 1-5d/12hol |  | P02 | CON | WATE | SA | CN |
| ContractNo_C790 |  | Excavate Abutments & Surrounding Area - P2SA SB |  | 8d | 2027-06-09 | 2027-06-18 | ContractNo_C755 | 11d | 0d |  | Laborer [210 h]; Foreman [64 h]; Bulldozer Type X [64 h]; Bid Item Value [64 h] | P02 | CON | EART | SA | CN |
| ContractNo_C805 |  | Demo Existing Substructure - P2SA SB |  | 5d | 2027-06-09 | 2027-06-15 | ContractNo_C755, ContractNo_C765 | 2d | 0d |  |  | P02 | CON | DEMO | SA | CN |
| ContractNo_C815 |  | Set & Grout Precast Abutments - P2SA SB (NOTE: Ensure Grout Cure Period is accounted for) |  | 4d | 2027-06-16 | 2027-06-21 | ContractNo_C805 | 2d | 0d |  |  | P02 | CON | CONC | SA | CN |
|  | StpB | **Step B** |  |  | 2027-06-22 | 2027-08-25 |  |  |  |  |  |  |  |  |  |  |
| ContractNo_C825 |  | Install Steel Beams - P2SB SB |  | 6d | 2027-06-22 | 2027-06-29 | ContractNo_C815 | 2d | 0d |  | Steel Worker [210 h] | P02 | CON | STEE | SB | CN |
| ContractNo_C835 |  | Install Precast Decks - P2SB SB |  | 4d | 2027-06-30 | 2027-07-06 | ContractNo_C825 | 2d | 0d |  |  | P02 | CON | CONC | SB | CN |
| ContractNo_C960 |  | Postension Precast Decks - P2SB SB |  | 1d | 2027-07-07 | 2027-07-07 | ContractNo_C835 | 2d | 0d |  |  | P02 | CON | CONC | SB | CN |
| ContractNo_C845 |  | Grout Precast Decks - P2SB SB |  | 3d | 2027-07-08 | 2027-07-12 | ContractNo_C835, ContractNo_C960 | 2d | 0d |  |  | P02 | CON | CONC | SB | CN |
| ContractNo_C855 |  | F/R/Pour Sidewalk Placement 1 - P2SB SB |  | 2d | 2027-07-13 | 2027-07-14 | ContractNo_C845 | 2d | 0d |  |  | P02 | CON | CONC | SB | CN |
| ContractNo_C970 |  | 72 Hour Placement Cure Period for Sidewalks - P2SB SB |  | 3d | 2027-07-14 | 2027-07-17 | ContractNo_C855 | 4.67d | 1.67d | Cal04-7d/24hr/No Hol (Milestones) |  | P02 | CON | CONC | SB | CN |
| ContractNo_C980 |  | Sidewalk Placement 2 - P2SB SB |  | 2d | 2027-07-19 | 2027-07-20 | ContractNo_C970 | 3d | 0d |  |  | P02 | CON | CONC | SB | CN |
| ContractNo_C990 |  | Full Cure Period for Sidewalks - P2SB SB |  | 14d | 2027-07-20 | 2027-08-03 | ContractNo_C980 | 5.67d | 0.67d | Cal04-7d/24hr/No Hol (Milestones) |  | P02 | CON | CONC | SB | CN |
| ContractNo_C875 |  | Install waterproofing - P2SB SB |  | 3d | 2027-08-04 | 2027-08-06 | ContractNo_C855, ContractNo_C990 | 3d | 0d | Cal12-Paving 5d/12hol |  | P02 | CON | CONC | SB | CN |
| ContractNo_C1000 |  | Place Protective Course Pavement - P2SB SB |  | 3d | 2027-08-09 | 2027-08-11 | ContractNo_C875 | 3d | 0d | Cal12-Paving 5d/12hol |  | P02 | CON | CONC | SB | CN |
| ContractNo_C865 |  | Install Railings - P2SB SB |  | 4d | 2027-08-12 | 2027-08-17 | ContractNo_C855, ContractNo_C1000 | 3d | 0d |  |  | P02 | CON | STEE | SB | CN |
| ContractNo_C880 |  | Place Base & Top Pavement - P2SB SB |  | 4d | 2027-08-18 | 2027-08-23 | ContractNo_C875, ContractNo_C320, ContractNo_C865 | 3d | 0d | Cal12-Paving 5d/12hol |  | P02 | CON | SITE | SB | CN |
| ContractNo_C890 |  | Install Pavement Markers, Sign and Stripe - P2SB SB |  | 2d | 2027-08-24 | 2027-08-25 | ContractNo_C880 | 3d | 0d | Cal12-Paving 5d/12hol |  | P02 | CON | SITE | SB | CN |
| ContractNo_C885 |  | Complete Phase 2 - P2SB SB | milestone | 0d | 2027-08-25 | 2027-08-25 | ContractNo_C890, ContractNo_C865 | 3d |  |  |  | P02 | CON | NA | SB | CN |

| ID | WBS | Activity | Duration | Start | Finish | Predecessors | Total float | Free float | Calendar | CST-SubPhase | CST-Responsibility | CST-Type | CST-Step | CST-Phase |
| --- | --- | --- | --- | --- | --- | --- | --- | --- | --- | --- | --- | --- | --- | --- |
|  | StpC | **Step C** |  | 2027-06-21 | 2027-08-30 |  |  |  |  |  |  |  |  |  |
| ContractNo_C190 |  | Approach Work - Raise Grades - P2SC SB RDWY | 16d | 2027-06-21 | 2027-07-13 | ContractNo_C790 | 11d | 0d |  | P02 | CON | EART | SC | CN |
| ContractNo_C200 |  | Repair Underground Drainage Structure - P2SC SB RDWY | 5d | 2027-07-14 | 2027-07-20 | ContractNo_C190, ContractNo_P580 FF, ContractNo_U430 | 11d | 0d |  | P02 | CON | SITE | SC | CN |
| ContractNo_C320 |  | Backfill & Grade - P2SC SB RDWY | 12d | 2027-07-21 | 2027-08-05 | ContractNo_C200 | 11d | 6d |  | P02 | CON | EART | SC | CN |
| ContractNo_C470 |  | Install Landscape, Sod, Etc. - P2SC SB RDWY | 11d | 2027-08-16 | 2027-08-30 | ContractNo_C320 | 32d |  | Cal13-Planting 5d/12hol - Evergreen | P02 | CON | SITE | SC | CN |
|  | StpD | **Step D** |  |  |  |  |  |  |  |  |  |  |  |  |
|  | Ph3 | **Stage 3** |  |  |  |  |  |  |  |  |  |  |  |  |
|  | StpA | **Step A** |  |  |  |  |  |  |  |  |  |  |  |  |
|  | StpB | **Step B** |  |  |  |  |  |  |  |  |  |  |  |  |
|  | StpC | **Step C** |  |  |  |  |  |  |  |  |  |  |  |  |
|  | StpD | **Step D** |  |  |  |  |  |  |  |  |  |  |  |  |
|  | Ph4 | **Stage 4** |  |  |  |  |  |  |  |  |  |  |  |  |
|  | StpA | **Step A** |  |  |  |  |  |  |  |  |  |  |  |  |
|  | StpB | **Step B** |  |  |  |  |  |  |  |  |  |  |  |  |
|  | StpC | **Step C** |  |  |  |  |  |  |  |  |  |  |  |  |
|  | StpD | **Step D** |  |  |  |  |  |  |  |  |  |  |  |  |
|  | Ph5 | **Stage 5** |  |  |  |  |  |  |  |  |  |  |  |  |
|  | StpA | **Step A** |  |  |  |  |  |  |  |  |  |  |  |  |
|  | StpB | **Step B** |  |  |  |  |  |  |  |  |  |  |  |  |
|  | StpC | **Step C** |  |  |  |  |  |  |  |  |  |  |  |  |
|  | StpD | **Step D** |  |  |  |  |  |  |  |  |  |  |  |  |
|  | Clo | **Close-Out** |  | 2027-08-31 | 2027-10-20 |  |  |  |  |  |  |  |  |  |
| ContractNo_C340 |  | MassDOT Inspection & Generate Punchlist | 21d | 2027-08-31 | 2027-09-20 | ContractNo_MS03 | 0d |  | Cal03A-7d/8hr/No Holidays | GN | DOT | NA | NS | CL |
| ContractNo_C360 |  | Prepare & Submit Remaining Project Documentation | 20d | 2027-08-31 | 2027-09-28 | ContractNo_MS03 | 14d |  |  | GN | CON | NA | NS | CL |
| ContractNo_C330 |  | Complete Punchlist & Demobilize | 30d | 2027-09-21 | 2027-10-20 | ContractNo_MS04, ContractNo_C340, ContractNo_MS02 | 0d |  | Cal03A-7d/8hr/No Holidays | GN | CON | NA | NS | CL |

| ID | WBS | Activity | Duration | Start | Finish | Total float | Calendar | Resources | Cost | CST-SubPhase | CST-Responsibility | CST-Type | CST-Step | CST-Phase |
| --- | --- | --- | --- | --- | --- | --- | --- | --- | --- | --- | --- | --- | --- | --- |
|  | Pla | **Placeholder** |  | 2026-01-01 | 2026-12-01 |  |  |  |  |  |  |  |  |  |
| ContractNo_CAL04 |  | Cal04-7D/8Hr, No Hol (milestones) | 33.33d | 2026-01-01 | 2026-02-03 | 624.33d | Cal04-7d/24hr/No Hol (Milestones) |  |  | CP | NA | NA | NS | PL |
| ContractNo_CAL03A |  | Cal03A-7d/8hr/No Holidays | 100d | 2026-01-01 | 2026-04-10 | 558d | Cal03A-7d/8hr/No Holidays |  |  | CP | NA | NA | NS | PL |
| ContractNo_C&RP |  | Cost & Resource Placeholder (Delete After Importing) | 100d | 2026-01-02 | 2026-05-27 | 350d |  | Bid Item Value [40 h]; Laborer [200 h]; Crane Type X [800 h]; Operator [800 h]; Steel Worker [800 h]; Bulldozer Type X [800 h]; Electrician [800 h]; Excavator Type X [800 h]; Foreman [800 h]; Paver Type X [800 h]; Grader TypeX [800 h]; Compactor Type X [800 h] | 50,000 | CP | NA | NA | NS | PL |
| ContractNo_CAL01 |  | Cal01-5D/8Hr, 12 Hol | 100d | 2026-01-02 | 2026-05-27 | 350d |  |  |  | CP | NA | NA | NS | PL |
| ContractNo_CAL02 |  | Cal02-6D/8Hr, 12 Hol | 100d | 2026-01-02 | 2026-05-01 | 442d | Cal02-6d/8hr/12hol |  |  | CP | NA | NA | NS | PL |
| ContractNo_CAL03 |  | Cal03-7D/8Hr, 12 Hol | 100d | 2026-01-02 | 2026-04-13 | 536d | Cal03-7d/8hr/12hol |  |  | CP | NA | NA | NS | PL |
| ContractNo_CAL06 |  | Cal06-5D/8Hr, 12 Hol - Mjr Rdwy | 100d | 2026-01-02 | 2026-05-29 | 334d | Cal06-5d/8hr/12hol-Mjr Rdwy |  |  | CP | NA | NA | NS | PL |
| ContractNo_CAL07 |  | Cal07-6D/8Hr, 12 Hol - Mjr Rdwy | 100d | 2026-01-02 | 2026-05-05 | 412d | Cal07-6d/8hr/12hol-MjrRdwy |  |  | CP | NA | NA | NS | PL |
| ContractNo_CAL08 |  | Cal08-7D/8Hr, 12 Hol - Mjr Rdwy | 100d | 2026-01-02 | 2026-04-17 | 490d | Cal08-7d/8hr/12hol-Mjr Rdwy |  |  | CP | NA | NA | NS | PL |
| ContractNo_CAL10 |  | Cal10-Winter Ineff, 5D/12 Hol | 100d | 2026-01-02 | 2026-06-18 | 313d | Cal10-Wntr Ineff 5d/12hol |  |  | CP | NA | NA | NS | PL |
| ContractNo_CAL16 |  | Cal16-Water Access 2, 5D/12Hol (Fish Migration) | 50d | 2026-01-02 | 2026-03-16 | 197d | Cal16-Wtr Acc 2-5d/12hol |  |  | CP | NA | NA | NS | PL |
| ContractNo_CAL05 |  | Cal05-MBTA Night No Hol | 100d | 2026-01-02 | 2026-05-27 | 350d | Cal05-MBTA Night/12hol |  |  | CP | NA | NA | NS | PL |
| ContractNo_CAL11 |  | Cal11-Winter Shut 5D/8Hr, 12Hol | 100d | 2026-03-16 | 2026-08-06 | 230d | Cal11-Wntr Shut 5d/12hol |  |  | CP | NA | NA | NS | PL |
| ContractNo_CAL11A |  | Cal11A-Winter Shut 5D/8Hr, 12Hol - Mjr Rdwy | 100d | 2026-03-16 | 2026-08-11 | 216d | Cal11A-Wntr Shut 5d/12hol-Mjr Rdwy |  |  | CP | NA | NA | NS | PL |
| ContractNo_CAL14 |  | Cal14-Planting, 5D/12Hol - Deciduous | 100d | 2026-03-23 | 2026-12-01 | 73d | Cal14-Planting 5d/12hol - Deciduous |  |  | CP | NA | NA | NS | PL |
| ContractNo_CAL12 |  | Cal12-Paving, 5D/12 Hol | 100d | 2026-04-01 | 2026-08-24 | 196d | Cal12-Paving 5d/12hol |  |  | CP | NA | NA | NS | PL |
| ContractNo_CAL12A |  | Cal12A-Paving, 5D/12 Hol - Mjr Rdwy | 100d | 2026-04-01 | 2026-08-27 | 185d | Cal12A-Paving 5d/12hol-Mjr Rdwy |  |  | CP | NA | NA | NS | PL |
| ContractNo_CAL17 |  | Cal17 - Reclaimation - 5d/12hol | 100d | 2026-04-15 | 2026-09-08 | 153d | Cal17-Reclaimation-5d/12hol |  |  | CP | NA | NA | NS | PL |
| ContractNo_CAL13 |  | Cal13-Planting, 5D/12Hol - Evergreen | 50d | 2026-04-16 | 2026-09-14 | 95d | Cal13-Planting 5d/12hol - Evergreen |  |  | CP | NA | NA | NS | PL |
| ContractNo_CAL15 |  | Cal15-Water Access1, 5D/12Hol (Low Flow) | 50d | 2026-06-01 | 2026-08-11 | 121d | Cal15-Wtr Acc 1-5d/12hol |  |  | CP | NA | NA | NS | PL |
|  | Deleted | **Deleted Activities** |  |  |  |  |  |  |  |  |  |  |  |  |

## Activity codes

| Code | Value | Meaning |
| --- | --- | --- |
| CST-Phase | CL | Close Out |
| CST-Phase | CN | Construction |
| CST-Phase | MS | Milestones |
| CST-Phase | PC | Preconstruction |
| CST-Phase | PL | Placeholder |
| CST-Phase | UR | Utility Relocation |
| CST-Responsibility | CON | Contractor (Prime) |
| CST-Responsibility | DOT | MassDOT |
| CST-Responsibility | NA | Not Applicable |
| CST-Responsibility | UKE | Utility: Keyspan-Electric |
| CST-Step | BLS | Baseline Schedule |
| CST-Step | BRR | Bridge Railing |
| CST-Step | CMD | Concrete Mix Design |
| CST-Step | DEM | Demolition Plan |
| CST-Step | DRA | Drainage Structures |
| CST-Step | HSP | Health & Safety Plan |
| CST-Step | NS | No Step |
| CST-Step | PCD | Precast Decking |
| CST-Step | SA | Step A |
| CST-Step | SB | Step B |
| CST-Step | SC | Step C |
| CST-Step | SD | Step D |
| CST-Step | SEP | Steel Erection Plan |
| CST-Step | STL | Steel Beams |
| CST-Step | SWP | Storm Water Protection Plan |
| CST-Step | TCP | Traffic Control Plan |
| CST-Step | TPD | Temporary Pavement Design |
| CST-Step | URP | Utility Relocation & Coordination Plan |
| CST-Step | WCP | Water Control Plan |
| CST-Step | WNT | WInter Concrete Plan |
| CST-SubPhase | CP | Calendar Placeholder |
| CST-SubPhase | DU | Contract Durations |
| CST-SubPhase | GN | General |
| CST-SubPhase | P01 | Phase 1 |
| CST-SubPhase | P02 | Phase 2 |
| CST-SubPhase | P03 | Phase 3 |
| CST-SubPhase | PE | Permit |
| CST-SubPhase | PR | Procurement |
| CST-Type | CONC | Concrete |
| CST-Type | DEMO | Demolition |
| CST-Type | EART | Earthwork |
| CST-Type | NA | Not Applicable |
| CST-Type | PRO | Procurement |
| CST-Type | SITE | Site Work |
| CST-Type | STEE | Steel |
| CST-Type | UTIL | Utility |
| CST-Type | WATE | Water Control |
